# Projek Akhir MPTI_RFID pelacakan bagasi bandara

Schedule from MS Project, 2026-02-09 to 2028-01-27, status date 2026-03-20, costs in Rp, A marks actual dates.

## Calendars

- Kalender Pelacakan Bagasi Bandara Indo-Aero: Mon-Fri 08:00-12:00, 13:00-17:00; Sat-Sun off. Exceptions (off unless hours are given): 2026-02-17 (Tahun Baru Imlek), 2026-04-20 (Hari Raya Idul Fitri).

## Resources

| Resource | Unit | Rate |
| --- | --- | --- |
| Project Manager |  | 120000 |
| System Analyst |  | 90000 |
| Software Developer |  | 100000 |
| Network / HW Engineer |  | 95000 |
| QA / Tester |  | 80000 |
| RFID Reader Gate | unit | 12000000 |
| Handheld RFID Scanner | unit | 7500000 |
| RFID Smart Tags | pcs | 3000 |
| Printer RFID | unit | 8500000 |
| Local Server Rack | unit | 18000000 |
| Switch POE | unit | 4500000 |
| Outdoor Access Point | unit | 2500000 |
| Kabel UTP Cat6 | M | 15000 |
| Biaya Pelatihan Operasional |  |  |
| Biaya Pengujian & UAT |  |  |

## Schedule

| ID | WBS | Task | Type | Duration | Start | Finish | Predecessors | Complete | Remaining | Baseline start | Baseline finish | Baseline duration | Total slack | Free slack | Constraint | Resources | Work | Cost | Baseline cost | Actual cost | Status Task (Text1) | Buffer Time |
| --- | --- | --- | --- | --- | --- | --- | --- | --- | --- | --- | --- | --- | --- | --- | --- | --- | --- | --- | --- | --- | --- | --- |
| 1 | 1 | **Proyek Implementasi RFID Bandara Indo-Aero** |  | 512d | 2026-02-09 A | 2028-01-27 |  |  | 512d | 2026-02-09 | 2026-04-24 | 53d | 0d |  |  |  | 1512.02h | 206,178,000 | 206,178,233.36 | 34,015,000 |  |  |
| 2 | 1.1 | **Manajemen Proyek** |  | 3d | 2026-02-09 | 2026-02-11 |  |  |  | 2026-02-09 | 2026-04-13 | 45d | -3d | 0d |  |  | 24h | 2,880,000 | 2,880,000 |  |  |  |
| 3 | 1.1.1 | Dokumen Project Charter & Rencana Proyek |  | 3d | 2026-02-09 | 2026-02-11 |  |  |  | 2026-02-09 | 2026-02-11 | 3d | -3d | 0d |  | Project Manager | 24h | 2,880,000 | 2,880,000 |  | Proses |  |
| 4 | 1.1.3 | **Milestone: Project Charter & Rencana Disetujui** |  | 45d | 2026-02-09 | 2026-04-13 | 3 |  |  | 2026-02-11 | 2026-02-11 | 0d | 0d |  |  |  | 80h | 9,600,000 | 9,600,000 |  | Proses |  |
| 5 | 1.1.2 | **Laporan Evaluasi dan Kemajuan Mingguan** |  | 45d | 2026-02-09 | 2026-04-13 |  |  |  | 2026-02-09 | 2026-04-13 | 45d | 0d |  |  |  | 80h | 9,600,000 | 9,600,000 |  |  |  |
| 6 | 1.1.2.1 | Laporan Evaluasi dan Kemajuan Mingguan 1 |  | 4d | 2026-02-09 | 2026-02-12 |  |  |  | 2026-02-09 | 2026-02-09 | 1d | 0d |  | start no earlier than 2026-02-09 | Project Manager | 8h | 960,000 | 960,000 |  | Proses |  |
| 7 | 1.1.2.2 | Laporan Evaluasi dan Kemajuan Mingguan 2 |  | 1d | 2026-02-16 | 2026-02-16 |  |  |  | 2026-02-16 | 2026-02-16 | 1d | 506d |  | start no earlier than 2026-02-16 | Project Manager | 8h | 960,000 | 960,000 |  | Proses |  |
| 8 | 1.1.2.3 | Laporan Evaluasi dan Kemajuan Mingguan 3 |  | 1d | 2026-02-23 | 2026-02-23 |  |  |  | 2026-02-23 | 2026-02-23 | 1d | 502d |  | start no earlier than 2026-02-23 | Project Manager | 8h | 960,000 | 960,000 |  | Proses |  |
| 9 | 1.1.2.4 | Laporan Evaluasi dan Kemajuan Mingguan 4 |  | 1d | 2026-03-02 | 2026-03-02 |  |  |  | 2026-03-02 | 2026-03-02 | 1d | 497d |  | start no earlier than 2026-03-02 | Project Manager | 8h | 960,000 | 960,000 |  | Proses |  |
| 10 | 1.1.2.5 | Laporan Evaluasi dan Kemajuan Mingguan 5 |  | 1d | 2026-03-09 | 2026-03-09 |  |  |  | 2026-03-09 | 2026-03-09 | 1d | 492d |  | start no earlier than 2026-03-09 | Project Manager | 8h | 960,000 | 960,000 |  | Proses |  |
| 11 | 1.1.2.6 | Laporan Evaluasi dan Kemajuan Mingguan 6 |  | 1d | 2026-03-16 | 2026-03-16 |  |  |  | 2026-03-16 | 2026-03-16 | 1d | 487d |  | start no earlier than 2026-03-16 | Project Manager | 8h | 960,000 | 960,000 |  | Proses |  |
| 12 | 1.1.2.7 | Laporan Evaluasi dan Kemajuan Mingguan 7 |  | 1d | 2026-03-23 | 2026-03-23 |  |  |  | 2026-03-23 | 2026-03-23 | 1d | 482d |  | start no earlier than 2026-03-23 | Project Manager | 8h | 960,000 | 960,000 |  | Proses |  |
| 13 | 1.1.2.8 | Laporan Evaluasi dan Kemajuan Mingguan 8 |  | 1d | 2026-03-30 | 2026-03-30 |  |  |  | 2026-03-30 | 2026-03-30 | 1d | 477d |  | start no earlier than 2026-03-30 | Project Manager | 8h | 960,000 | 960,000 |  | Proses |  |
| 14 | 1.1.2.9 | Laporan Evaluasi dan Kemajuan Mingguan 9 |  | 1d | 2026-04-06 | 2026-04-06 |  |  |  | 2026-04-06 | 2026-04-06 | 1d | 472d |  | start no earlier than 2026-04-06 | Project Manager | 8h | 960,000 | 960,000 |  | Proses |  |
| 15 | 1.1.2.10 | Laporan Evaluasi dan Kemajuan Mingguan 10 |  | 1d | 2026-04-13 | 2026-04-13 |  |  |  | 2026-04-13 | 2026-04-13 | 1d | 467d |  | start no earlier than 2026-04-13 | Project Manager | 8h | 960,000 | 960,000 |  | Proses |  |
| 16 | 1.2 | **Tahap Perencanaan Teknis & Analisis Kebutuhan** |  | 9d | 2026-02-12 | 2026-02-25 |  |  |  | 2026-02-12 | 2026-02-25 | 9d | 3d |  |  |  | 144h | 13,320,000 | 13,320,000 |  |  |  |
| 17 | 1.2.1 | Dokumen Hasil Survei Titik Pemasangan & Peta Jalur Conveyor |  | 5d | 2026-02-12 | 2026-02-19 | 3 |  |  | 2026-02-12 | 2026-02-19 | 5d | 3d | 0d |  | System Analyst; Network / HW Engineer | 80h | 7,400,000 | 7,400,000 |  | Proses |  |
| 18 | 1.2.2 | Dokumen Desain Topologi Jaringan Wi-Fi (Apron/Concourse) |  | 1d | 2026-02-20 | 2026-02-25 | 17 |  |  | 2026-02-20 | 2026-02-25 | 4d | 0d |  |  | Network / HW Engineer | 32h | 3,040,000 | 3,040,000 |  | Proses |  |
| 19 | 1.2.3 | Dokumen Spesifikasi Integrasi API/DCS Penerbangan |  | 1d | 2026-02-20 | 2026-02-25 | 17 |  |  | 2026-02-20 | 2026-02-25 | 4d | 0d |  |  | System Analyst | 32h | 2,880,000 | 2,880,000 |  | Proses |  |
| 20 | 1.2.4 | Milestone: Perencanaan Teknis Selesai | milestone | 0d | 2026-02-25 A | 2026-02-25 A | 18, 19 | 100% |  | 2026-02-25 | 2026-02-25 | 0d |  |  |  |  |  |  |  |  | Proses |  |
| 21 | 1.3 | **Tahap Pengadaan Perangkat Keras & Infrastruktur** |  | 19d | 2026-02-20 A | 2026-03-18 |  |  | 19d | 2026-02-20 | 2026-03-06 | 10d | 485d |  |  |  | 192h | 75,058,000 | 75,058,233.36 | 34,015,000 |  |  |
| 22 | 1.3.1 | 6 Unit RFID Reader Gate & Printer RFID Tersedia |  | 4d | 2026-02-26 A | 2026-03-06 | 19 |  | 4d | 2026-02-26 | 2026-03-06 | 7d | 493d |  |  | Printer RFID [1 unit]; Project Manager; RFID Reader Gate [1 unit] | 56h | 27,220,000 | 27,220,170.83 | 8,500,000 | Proses | +3 hari (Buffer Mitigasi Pengadaan Gate) |
| 23 | 1.3.2 | 5 Unit Handheld Scanner & 5.000 Smart Tag Tersedia |  | 7d | 2026-02-26 A | 2026-03-18 | 18SS, 19 |  | 7d | 2026-02-26 | 2026-03-06 | 7d | 485d |  |  | Handheld RFID Scanner [1 unit]; Project Manager; RFID Smart Tags [1 pcs] | 56h | 14,223,000 | 14,223,062.53 | 7,500,000 | Proses |  |
| 24 | 1.3.3 | 1 Unit Server Lokal, Switch PoE, Access Point & Kabel LAN Tersedia |  | 2d | 2026-02-20 A | 2026-02-26 | 19SS |  | 2d | 2026-02-20 | 2026-02-26 | 5d | 473d | 0d |  | Kabel UTP Cat6 [1 M]; Local Server Rack [1 unit]; Network / HW Engineer; Outdoor Access Point [1 unit]; Project Manager; Switch POE [1 unit] | 80h | 33,615,000 | 33,615,000 | 18,015,000 | Proses |  |
| 25 | 1.3.4 | Milestone 1 : Pengadaan Perangkat Keras Selesai | milestone | 0d | 2026-03-06 A | 2026-03-06 A | 22, 23, 24 | 100% |  | 2026-03-06 | 2026-03-06 | 0d |  |  |  |  |  |  |  |  | Proses |  |

| ID | WBS | Task | Type | Duration | Start | Finish | Predecessors | Remaining | Baseline start | Baseline finish | Baseline duration | Total slack | Free slack | Resources | Work | Cost | Baseline cost | Status Task (Text1) | Buffer Time |
| --- | --- | --- | --- | --- | --- | --- | --- | --- | --- | --- | --- | --- | --- | --- | --- | --- | --- | --- | --- |
| 26 | 1.4 | **Tahap Pengembangan Software (Core System)** |  | 46d | 2026-02-20 | 2026-04-27 |  |  | 2026-02-20 | 2026-04-01 | 29d | 0d |  |  | 504h | 49,040,000 | 49,040,000 |  |  |
| 27 | 1.4.1 | Modul Sinkronisasi Check-in, Integrasi DCS Penerbangan & Engine Pelacakan Real-Time |  | 20d | 2026-02-26 | 2026-04-09 | 19 |  | 2026-02-26 | 2026-03-25 | 20d | 0d |  | Software Developer; System Analyst | 160h | 15,200,000 | 15,200,000 | Proses | +3 hari (Buffer Mitigasi DCS & API) |
| 28 | 1.4.2 | Engine Pelacakan Real-Time & Deteksi Rute Salah (Mismatch Alert) |  | 16d | 2026-02-20 | 2026-03-18 | 19SS |  | 2026-02-20 | 2026-03-13 | 16d | 0d |  | Software Developer | 128h | 12,800,000 | 12,800,000 | Proses |  |
| 29 | 1.4.3 | Dashboard Visual & Manajemen Hak Akses |  | 14d | 2026-03-16 | 2026-04-15 | 28 |  | 2026-03-16 | 2026-04-01 | 13d | 0d |  | Software Developer [53.9%]; System Analyst [53.9%] | 112h | 10,640,000 | 10,640,000 | Proses |  |
| 30 | 1.4.4 | Aplikasi Handheld Scanner (Termasuk Mode Offline) |  | 6d | 2026-03-16 | 2026-03-26 | 28 |  | 2026-03-16 | 2026-03-23 | 6d | 0d |  | Software Developer | 48h | 4,800,000 | 4,800,000 | Proses |  |
| 31 | 1.4.5 | Fitur Notifikasi Layar Carousel Kedatangan |  | 3d | 2026-03-24 | 2026-03-26 | 30FF |  | 2026-03-24 | 2026-03-26 | 3d | 0d |  | Software Developer | 24h | 2,400,000 | 2,400,000 | Proses |  |
| 32 | 1.4.6 | Fitur Ekspor Laporan Statistik, Log Audit & Backup Otomatis |  | 4d | 2026-03-27 | 2026-04-27 | 30, 31 |  | 2026-03-27 | 2026-04-01 | 4d | 0d |  | Software Developer | 32h | 3,200,000 | 3,200,000 | Proses |  |
| 33 | 1.5 | **Tahap Instalasi Fisik & Konfigurasi Jaringan** |  | 26d | 2026-02-27 A | 2026-04-03 |  | 26d | 2026-02-27 | 2026-03-16 | 12d | 473d |  |  | 128h | 11,680,000 | 11,680,000 |  |  |
| 34 | 1.5.1 | Rak Server, UPS & Konfigurasi Jaringan Inti Terpasang |  | 3d | 2026-02-27 | 2026-03-06 | 24 |  | 2026-02-27 | 2026-03-03 | 3d | 473d | 0d | Network / HW Engineer | 24h | 2,280,000 | 2,280,000 | Proses |  |
| 35 | 1.5.2 | Infrastruktur Kabel LAN & Access Point Wi-Fi Area Apron Terpasang |  | 5d | 2026-03-10 | 2026-03-20 | 34FS+1d |  | 2026-03-04 | 2026-03-10 | 5d | 473d | 0d | Network / HW Engineer | 40h | 3,800,000 | 3,800,000 | Proses |  |
| 36 | 1.5.3 | RFID Reader Gate Terpasang & Terkalibrasi di Conveyor Belt |  | 10d | 2026-03-23 | 2026-04-03 | 35, 25 |  | 2026-03-11 | 2026-03-16 | 4d | 473d | 0d | Network / HW Engineer; QA / Tester | 64h | 5,600,000 | 5,600,000 | Proses | +2 hari (Buffer Mitigasi Kalibrasi Conveyor) |
| 37 | 1.5.4 | Milestone 2: Instalasi & Konfigurasi Fisik Selesai |  | 14d | 2026-03-16 A | 2026-04-03 | 36 | 14d | 2026-03-16 | 2026-03-16 | 0d | 473d |  |  |  |  |  | Proses |  |
| 38 | 1.6 | **Tahap Pengujian, Pelatihan & Penutupan Sistem** |  | 458d | 2026-04-28 | 2028-01-27 |  |  | 2026-04-02 | 2026-04-24 | 17d | 0d |  |  | 440.02h | 41,600,000 | 41,600,000 |  |  |
| 39 | 1.6.1 | Pengujian Seluruh Modul Sistem RFID Pelacakan Bagasi |  | 6d | 2026-04-28 | 2026-06-30 | 27, 32 |  | 2026-04-02 | 2026-04-09 | 6d | 412d |  | QA / Tester; Software Developer | 48h | 4,320,000 | 4,320,000 | Proses |  |
| 40 | 1.6.2 | Laporan Hasil Pengujian Sistem Terintegrasi (SIT) |  | 47d | 2026-04-28 | 2026-07-01 | 32, 29 |  | 2026-04-02 | 2026-04-08 | 5d | 0d |  | Project Manager [260%]; QA / Tester [260%] | 208h | 20,800,000 | 20,800,000 | Proses |  |
| 41 | 1.6.3 | Laporan User Acceptance Test (UAT) & Simulasi Bagasi Nyasar |  | 69d | 2026-07-02 | 2026-10-06 | 40 |  | 2026-04-10 | 2026-04-15 | 4d | 0d |  | Biaya Pengujian & UAT [0.1%]; Project Manager; QA / Tester | 64.02h | 6,400,000 | 6,400,000 | Proses |  |
| 42 | 1.6.4 | Staf Ground Handling & Check-in Terlatih |  | 92d | 2026-10-07 | 2027-02-11 | 41 |  | 2026-04-16 | 2026-04-21 | 3d | 0d |  | Biaya Pelatihan Operasional; Project Manager; System Analyst | 72h | 5,040,000 | 5,040,000 | Proses | +2 hari (Buffer Mitigasi Pelatihan Ground Handling) |
| 43 | 1.6.5 | Dokumen Laporan Akhir, Serah Terima & Buku Panduan Operasional |  | 116d | 2027-02-12 | 2027-07-23 | 42 |  | 2026-04-22 | 2026-04-24 | 3d | 0d |  | Project Manager; System Analyst | 48h | 5,040,000 | 5,040,000 | Proses |  |
| 44 | 1.6.6 | Milestone 3: Sistem Siap Operasional & Serah Terima | milestone | 0d | 2027-07-23 | 2028-01-27 | 43 |  | 2026-04-24 | 2026-04-24 | 0d | 0d |  |  |  |  |  | Proses |  |
| 45 | 1.7 | Contingency Reserve |  | 55d | 2026-02-09 | 2026-04-28 |  |  | 2026-02-09 | 2026-04-24 | 53d | 457d |  |  |  | 13,500,000 | 13,500,000 |  |  |
